# Babcock Building A Build Out - RFCSP-226-05-082-CNST

Schedule from MS Project XML, 2026-08-03 to 2027-01-28.

## Calendars

- Standard: Mon-Fri 08:00-12:00, 13:00-17:00; Sat-Sun off. Exceptions (off unless hours are given): 2026-09-07 (Labor Day), 2026-11-26 (Thanksgiving Day), 2026-11-27 (Day After Thanksgiving), 2026-12-24 (Christmas Eve), 2026-12-25 (Christmas Day), 2027-01-01 (New Year's Day).

## Schedule

| ID | WBS | Task | Duration | Start | Finish | Predecessors | Total slack | Free slack |
| --- | --- | --- | --- | --- | --- | --- | --- | --- |
| 1 | 1 | **Babcock Building A Build Out - RFCSP-226-05-082-CNST** | 123d | 2026-08-03 | 2027-01-28 |  |  |  |
| 2 | 1.1 | **Preconstruction** | 49d | 2026-08-03 | 2026-10-09 |  |  |  |
| 3 | 1.1.1 | NTP | 1d | 2026-08-03 | 2026-08-03 |  |  |  |
| 4 | 1.1.2 | Contract Award & Execution | 1d | 2026-08-04 | 2026-08-04 | 3 |  |  |
| 5 | 1.1.3 | Payment & Performance Bonds / Builder's Risk & Insurance | 5d | 2026-08-04 | 2026-08-10 | 4SS | 11d |  |
| 6 | 1.1.4 | Pre-Construction Meeting - Owner / A/E / Triun | 1d | 2026-08-05 | 2026-08-05 | 4 | 14d |  |
| 7 | 1.1.5 | Preconstruction Submittals - SOV, Baseline Schedule, Safety Plan & Submittal Register | 5d | 2026-08-05 | 2026-08-11 | 4 | 10d |  |
| 8 | 1.1.6 | Building & Trade Permits - Application to Issuance (AHJ) | 15d | 2026-08-05 | 2026-08-25 | 4 |  |  |
| 9 | 1.1.7 | **Submittals** | 47d | 2026-08-05 | 2026-10-09 |  | 12d |  |
| 10 | 1.1.7.1 | **23 - HVAC Equipment (AHUs/RTUs, VAV Boxes, Fans & Grilles)** | 47d | 2026-08-05 | 2026-10-09 |  | 41d |  |
| 11 | 1.1.7.1.1 | Triun Review | 1d | 2026-08-05 | 2026-08-05 | 4 | 41d |  |
| 12 | 1.1.7.1.2 | A/E Review | 5d | 2026-08-06 | 2026-08-12 | 11 | 41d |  |
| 13 | 1.1.7.1.3 | Approved Submittal | 1d | 2026-08-13 | 2026-08-13 | 12 | 41d |  |
| 14 | 1.1.7.1.4 | Procurement | 40d | 2026-08-14 | 2026-10-09 | 13 | 41d |  |
| 15 | 1.1.7.2 | **26 - Electrical Distribution (Panelboards, Transformers & Disconnects)** | 47d | 2026-08-05 | 2026-10-09 |  | 27d |  |
| 16 | 1.1.7.2.1 | Triun Review | 1d | 2026-08-05 | 2026-08-05 | 4 | 27d |  |
| 17 | 1.1.7.2.2 | A/E Review | 5d | 2026-08-06 | 2026-08-12 | 16 | 27d |  |
| 18 | 1.1.7.2.3 | Approved Submittal | 1d | 2026-08-13 | 2026-08-13 | 17 | 27d |  |
| 19 | 1.1.7.2.4 | Procurement | 40d | 2026-08-14 | 2026-10-09 | 18 | 27d | 3d |
| 20 | 1.1.7.3 | **08 - Doors, Frames & Hardware (Schedules & Product Data)** | 37d | 2026-08-05 | 2026-09-25 |  | 22d |  |
| 21 | 1.1.7.3.1 | Triun Review | 1d | 2026-08-05 | 2026-08-05 | 4 | 22d |  |
| 22 | 1.1.7.3.2 | A/E Review | 5d | 2026-08-06 | 2026-08-12 | 21 | 22d |  |
| 23 | 1.1.7.3.3 | Approved Submittal | 1d | 2026-08-13 | 2026-08-13 | 22 | 22d |  |
| 24 | 1.1.7.3.4 | Procurement | 30d | 2026-08-14 | 2026-09-25 | 23 | 22d | 3d |

Notes:
- 3: Placeholder NTP date of 8/3/2026 - shift the project start date to the actual Notice to Proceed.
- 4: Remaining contract Exhibits provided after contract execution per RFCSP terms and the Owner/Contractor Agreement.
- 5: Performance Bond at 100% of the contract amount per RFCSP requirements.
- 7: Division 01 administrative submittals: Schedule of Values per Exhibit C divisions, baseline CPM schedule, site-specific safety plan, and the submittal register.
- 8: ASSUMPTION: 15 working-day permit review by the Authority Having Jurisdiction (AHJ) running concurrent with submittals - confirm jurisdiction and actual review timeline. Permit issuance gates mobilization/onsite start.
- 14: LONG-LEAD / CRITICAL DRIVER: largest procurement in the project (Division 23 material $543,259). Confirm manufacturer lead times at award; consider early release/purchase with the equipment submittal.
- 19: LONG-LEAD: switchgear/panelboard market lead times are volatile - confirm with vendor at award and consider early release.
- 24: LONG-LEAD. Hollow metal frames are needed early (set during framing) - request an early frame release from the supplier ahead of doors and hardware.

| ID | WBS | Task | Duration | Start | Finish | Predecessors | Total slack | Free slack |
| --- | --- | --- | --- | --- | --- | --- | --- | --- |
| 25 | 1.1.7.4 | **26 - Lighting Fixtures & Lighting Controls** | 37d | 2026-08-06 | 2026-09-28 |  | 52d |  |
| 26 | 1.1.7.4.1 | Triun Review | 1d | 2026-08-06 | 2026-08-06 | 4FS+1d | 52d |  |
| 27 | 1.1.7.4.2 | A/E Review | 5d | 2026-08-07 | 2026-08-13 | 26 | 52d |  |
| 28 | 1.1.7.4.3 | Approved Submittal | 1d | 2026-08-14 | 2026-08-14 | 27 | 52d |  |
| 29 | 1.1.7.4.4 | Procurement | 30d | 2026-08-17 | 2026-09-28 | 28 | 52d |  |
| 30 | 1.1.7.5 | **08 - Aluminum Storefront & Interior Glazing (Shop Drawings)** | 32d | 2026-08-06 | 2026-09-21 |  | 69d |  |
| 31 | 1.1.7.5.1 | Triun Review | 1d | 2026-08-06 | 2026-08-06 | 4FS+1d | 69d |  |
| 32 | 1.1.7.5.2 | A/E Review | 5d | 2026-08-07 | 2026-08-13 | 31 | 69d |  |
| 33 | 1.1.7.5.3 | Approved Submittal | 1d | 2026-08-14 | 2026-08-14 | 32 | 69d |  |
| 34 | 1.1.7.5.4 | Procurement | 25d | 2026-08-17 | 2026-09-21 | 33 | 69d | 51d |
| 35 | 1.1.7.6 | **06 - Architectural Millwork & Casework (Shop Drawings)** | 32d | 2026-08-07 | 2026-09-22 |  | 65d |  |
| 36 | 1.1.7.6.1 | Triun Review | 1d | 2026-08-07 | 2026-08-07 | 4FS+2d | 65d |  |
| 37 | 1.1.7.6.2 | A/E Review | 5d | 2026-08-10 | 2026-08-14 | 36 | 65d |  |
| 38 | 1.1.7.6.3 | Approved Submittal | 1d | 2026-08-17 | 2026-08-17 | 37 | 65d |  |
| 39 | 1.1.7.6.4 | Procurement | 25d | 2026-08-18 | 2026-09-22 | 38 | 65d | 54d |
| 40 | 1.1.7.7 | **23/25 - HVAC Controls / Building Automation** | 27d | 2026-08-07 | 2026-09-15 |  | 64d |  |
| 41 | 1.1.7.7.1 | Triun Review | 1d | 2026-08-07 | 2026-08-07 | 4FS+2d | 64d |  |
| 42 | 1.1.7.7.2 | A/E Review | 5d | 2026-08-10 | 2026-08-14 | 41 | 64d |  |
| 43 | 1.1.7.7.3 | Approved Submittal | 1d | 2026-08-17 | 2026-08-17 | 42 | 64d |  |
| 44 | 1.1.7.7.4 | Procurement | 20d | 2026-08-18 | 2026-09-15 | 43 | 64d | 40d |
| 45 | 1.1.7.8 | **28 - Fire Alarm & Security / Access Control (incl. AHJ Fire Alarm Permit)** | 27d | 2026-08-07 | 2026-09-15 |  | 73d |  |
| 46 | 1.1.7.8.1 | Triun Review | 1d | 2026-08-07 | 2026-08-07 | 4FS+2d | 73d |  |
| 47 | 1.1.7.8.2 | A/E Review | 5d | 2026-08-10 | 2026-08-14 | 46 | 73d |  |
| 48 | 1.1.7.8.3 | Approved Submittal | 1d | 2026-08-17 | 2026-08-17 | 47 | 73d |  |
| 49 | 1.1.7.8.4 | Procurement | 20d | 2026-08-18 | 2026-09-15 | 48 | 73d | 69d |

Notes:
- 29: LONG-LEAD: confirm fixture lead times; substitutions subject to A/E approval.
- 34: LONG-LEAD: storefront fabrication after approved shop drawings and field verification.
- 39: LONG-LEAD: custom casework fabrication; field measure after framing.
- 44: Division 25 Integrated Automation carries $0 in the bid tab - ASSUMPTION: controls/BAS are included under Division 23 HVAC. Confirm scope split.
- 49: Fire alarm shop drawings require separate AHJ permit/review before installation - confirm AHJ review time.

| ID | WBS | Task | Duration | Start | Finish | Predecessors | Total slack | Free slack |
| --- | --- | --- | --- | --- | --- | --- | --- | --- |
| 50 | 1.1.7.9 | **05 - Miscellaneous Metals & Equipment Support Steel (Shop Drawings)** | 22d | 2026-08-10 | 2026-09-09 |  | 60d |  |
| 51 | 1.1.7.9.1 | Triun Review | 1d | 2026-08-10 | 2026-08-10 | 4FS+3d | 60d |  |
| 52 | 1.1.7.9.2 | A/E Review | 5d | 2026-08-11 | 2026-08-17 | 51 | 60d |  |
| 53 | 1.1.7.9.3 | Approved Submittal | 1d | 2026-08-18 | 2026-08-18 | 52 | 60d |  |
| 54 | 1.1.7.9.4 | Procurement | 15d | 2026-08-19 | 2026-09-09 | 53 | 60d | 10d |
| 55 | 1.1.7.10 | **22 - Plumbing Fixtures, Piping & Insulation** | 22d | 2026-08-10 | 2026-09-09 |  | 37d |  |
| 56 | 1.1.7.10.1 | Triun Review | 1d | 2026-08-10 | 2026-08-10 | 4FS+3d | 37d |  |
| 57 | 1.1.7.10.2 | A/E Review | 5d | 2026-08-11 | 2026-08-17 | 56 | 37d |  |
| 58 | 1.1.7.10.3 | Approved Submittal | 1d | 2026-08-18 | 2026-08-18 | 57 | 37d |  |
| 59 | 1.1.7.10.4 | Procurement | 15d | 2026-08-19 | 2026-09-09 | 58 | 37d | 13d |
| 60 | 1.1.7.11 | **09 - Interior Finishes (Flooring, Tile, ACT & Paint)** | 22d | 2026-08-11 | 2026-09-10 |  | 68d |  |
| 61 | 1.1.7.11.1 | Triun Review | 1d | 2026-08-11 | 2026-08-11 | 4FS+4d | 68d |  |
| 62 | 1.1.7.11.2 | A/E Review | 5d | 2026-08-12 | 2026-08-18 | 61 | 68d |  |
| 63 | 1.1.7.11.3 | Approved Submittal | 1d | 2026-08-19 | 2026-08-19 | 62 | 68d |  |
| 64 | 1.1.7.11.4 | Procurement | 15d | 2026-08-20 | 2026-09-10 | 63 | 68d | 60d |
| 65 | 1.1.7.12 | **10/11/12 - Specialties, Equipment & Window Treatments** | 22d | 2026-08-11 | 2026-09-10 |  | 80d |  |
| 66 | 1.1.7.12.1 | Triun Review | 1d | 2026-08-11 | 2026-08-11 | 4FS+4d | 80d |  |
| 67 | 1.1.7.12.2 | A/E Review | 5d | 2026-08-12 | 2026-08-18 | 66 | 80d |  |
| 68 | 1.1.7.12.3 | Approved Submittal | 1d | 2026-08-19 | 2026-08-19 | 67 | 80d |  |
| 69 | 1.1.7.12.4 | Procurement | 15d | 2026-08-20 | 2026-09-10 | 68 | 80d | 76d |
| 70 | 1.1.7.13 | **27 - Structured Cabling & Communications** | 22d | 2026-08-12 | 2026-09-11 |  | 59d |  |
| 71 | 1.1.7.13.1 | Triun Review | 1d | 2026-08-12 | 2026-08-12 | 4FS+5d | 59d |  |
| 72 | 1.1.7.13.2 | A/E Review | 5d | 2026-08-13 | 2026-08-19 | 71 | 59d |  |
| 73 | 1.1.7.13.3 | Approved Submittal | 1d | 2026-08-20 | 2026-08-20 | 72 | 59d |  |
| 74 | 1.1.7.13.4 | Procurement | 15d | 2026-08-21 | 2026-09-11 | 73 | 59d | 49d |

Notes:
- 54: Includes RTU/AHU support frames, lintels, and miscellaneous framing.
- 59: Long-lead: confirm vendor lead time at award.
- 64: Long-lead: confirm vendor lead time at award.
- 69: Long-lead: confirm vendor lead time at award.
- 74: Long-lead: confirm vendor lead time at award.

| ID | WBS | Task | Type | Duration | Start | Finish | Predecessors | Total slack | Free slack |
| --- | --- | --- | --- | --- | --- | --- | --- | --- | --- |
| 75 | 1.1.7.14 | **07 - Roofing Patching, Firestopping & Joint Sealants** |  | 17d | 2026-08-12 | 2026-09-03 |  | 68d |  |
| 76 | 1.1.7.14.1 | Triun Review |  | 1d | 2026-08-12 | 2026-08-12 | 4FS+5d | 68d |  |
| 77 | 1.1.7.14.2 | A/E Review |  | 5d | 2026-08-13 | 2026-08-19 | 76 | 68d |  |
| 78 | 1.1.7.14.3 | Approved Submittal |  | 1d | 2026-08-20 | 2026-08-20 | 77 | 68d |  |
| 79 | 1.1.7.14.4 | Procurement |  | 10d | 2026-08-21 | 2026-09-03 | 78 | 68d | 18d |
| 80 | 1.1.7.15 | **03 - Concrete Mix Design (4,000 PSI)** |  | 12d | 2026-08-13 | 2026-08-28 |  | 52d |  |
| 81 | 1.1.7.15.1 | Triun Review |  | 1d | 2026-08-13 | 2026-08-13 | 4FS+6d | 52d |  |
| 82 | 1.1.7.15.2 | A/E Review |  | 5d | 2026-08-14 | 2026-08-20 | 81 | 52d |  |
| 83 | 1.1.7.15.3 | Approved Submittal |  | 1d | 2026-08-21 | 2026-08-21 | 82 | 52d |  |
| 84 | 1.1.7.15.4 | Procurement |  | 5d | 2026-08-24 | 2026-08-28 | 83 | 52d | 28d |
| 85 | 1.1.7.16 | **04 - Masonry Materials (CMU, Mortar & Grout)** |  | 12d | 2026-08-13 | 2026-08-28 |  | 41d |  |
| 86 | 1.1.7.16.1 | Triun Review |  | 1d | 2026-08-13 | 2026-08-13 | 4FS+6d | 41d |  |
| 87 | 1.1.7.16.2 | A/E Review |  | 5d | 2026-08-14 | 2026-08-20 | 86 | 41d |  |
| 88 | 1.1.7.16.3 | Approved Submittal |  | 1d | 2026-08-21 | 2026-08-21 | 87 | 41d |  |
| 89 | 1.1.7.16.4 | Procurement |  | 5d | 2026-08-24 | 2026-08-28 | 88 | 41d | 17d |
| 90 | 1.1.7.17 | **02 - Demolition Plan, Waste Management & Haul Routes** |  | 10d | 2026-08-05 | 2026-08-18 |  | 12d |  |
| 91 | 1.1.7.17.1 | Triun Review |  | 1d | 2026-08-05 | 2026-08-05 | 4 | 12d |  |
| 92 | 1.1.7.17.2 | A/E Review |  | 5d | 2026-08-06 | 2026-08-12 | 91 | 12d |  |
| 93 | 1.1.7.17.3 | Approved Submittal |  | 1d | 2026-08-13 | 2026-08-13 | 92 | 12d |  |
| 94 | 1.1.7.17.4 | Procurement |  | 3d | 2026-08-14 | 2026-08-18 | 93 | 12d |  |
| 95 | 1.2 | **Construction** |  | 105d | 2026-08-26 | 2027-01-27 |  |  |  |
| 96 | 1.2.1 | **Mobilization & Site Preparation** |  | 6d | 2026-08-26 | 2026-09-02 |  |  |  |
| 97 | 1.2.1.1 | Mobilize Field Office, Temporary Facilities & Site Protection |  | 3d | 2026-08-26 | 2026-08-28 | 6, 5, 8, 7 |  |  |
| 98 | 1.2.1.2 | Onsite Construction Start | milestone | 0d | 2026-08-26 | 2026-08-26 | 97SS | 1d |  |
| 99 | 1.2.1.3 | Temporary Power, Lighting & Ventilation |  | 3d | 2026-08-31 | 2026-09-02 | 97 | 1d |  |
| 100 | 1.2.1.4 | Install Dust Barriers, Floor Protection & Negative Air |  | 2d | 2026-08-31 | 2026-09-01 | 97 |  |  |
| 101 | 1.2.1.5 | Building Control Lines, Survey & Layout |  | 2d | 2026-08-31 | 2026-09-01 | 97 | 15d |  |

Notes:
- 79: Roof patching at new curbs/penetrations by a roofer compatible with the existing roof system to preserve any existing warranty - confirm existing roof warranty holder.
- 94: First construction activity onsite - expedite so demolition is not held.
- 97: Mobilization follows permit issuance, executed bonds, the approved safety plan/baseline schedule, and the pre-construction meeting.
- 98: Actual onsite start of construction - basis for the RFCSP 1.4.2 'Onsite Start to Project Completion' calendar-day duration.
- 100: ASSUMPTION: Building A is unoccupied and turned over to Triun for the construction period. If adjacent areas remain occupied, add phased containment and off-hours work - duration impact to be evaluated.

| ID | WBS | Task | Type | Duration | Start | Finish | Predecessors | Total slack | Free slack |
| --- | --- | --- | --- | --- | --- | --- | --- | --- | --- |
| 102 | 1.2.2 | **Selective Demolition (Division 02 - Existing Conditions)** |  | 15d | 2026-09-02 | 2026-09-23 |  |  |  |
| 103 | 1.2.2.1 | MEP Safe-Off, Disconnects & Cap-Offs |  | 2d | 2026-09-02 | 2026-09-03 | 100, 99SS+1d |  |  |
| 104 | 1.2.2.2 | Selective Interior Demolition - Walls, Ceilings, Flooring & Fixtures |  | 12d | 2026-09-04 | 2026-09-22 | 103, 94 |  |  |
| 105 | 1.2.2.3 | Demolish & Remove Redundant MEP Systems |  | 8d | 2026-09-09 | 2026-09-18 | 104SS+2d | 2d |  |
| 106 | 1.2.2.4 | Load, Haul & Legally Dispose of Demolition Debris |  | 10d | 2026-09-09 | 2026-09-22 | 104SS+2d |  |  |
| 107 | 1.2.2.5 | Post-Demolition Walk & Existing Conditions Verification - Owner / A/E / Triun |  | 1d | 2026-09-23 | 2026-09-23 | 104, 105, 106 |  |  |
| 108 | 1.2.3 | **Concrete, Underground & Structural Modifications (Divisions 03, 04, 05, 31)** |  | 33d | 2026-09-24 | 2026-11-09 |  | 24d |  |
| 109 | 1.2.3.1 | Sawcut Slab & Trench for New Underground Utilities |  | 3d | 2026-09-24 | 2026-09-28 | 107 | 24d |  |
| 110 | 1.2.3.2 | Underground Plumbing - Waste & Vent Rough-In (Division 22) |  | 5d | 2026-09-29 | 2026-10-05 | 109, 59 | 24d |  |
| 111 | 1.2.3.3 | Underground Plumbing Inspection (AHJ) - Hold Point Before Backfill |  | 1d | 2026-10-06 | 2026-10-06 | 110 | 24d |  |
| 112 | 1.2.3.4 | Backfill, Compact & Density Test Trenches |  | 2d | 2026-10-07 | 2026-10-08 | 111 | 24d |  |
| 113 | 1.2.3.5 | Slab Infill Pours - 4,000 PSI w/ Doweled Edges (Division 03) |  | 2d | 2026-10-09 | 2026-10-12 | 112, 84 | 24d |  |
| 114 | 1.2.3.6 | Concrete Field Testing (Slump, Air, Cylinders) |  | 2d | 2026-10-09 | 2026-10-12 | 113FF | 71d |  |
| 115 | 1.2.3.7 | Housekeeping Pads - Mechanical & Electrical Rooms |  | 2d | 2026-10-13 | 2026-10-14 | 113 | 24d |  |
| 116 | 1.2.3.8 | 28-Day Cylinder Breaks & Strength Verification |  | 1d | 2026-11-09 | 2026-11-09 | 113FS+19d | 51d |  |
| 117 | 1.2.3.9 | CMU Infill & Masonry Patching at Modified Openings (Division 04) |  | 3d | 2026-09-24 | 2026-09-28 | 107, 89 | 24d |  |
| 118 | 1.2.3.10 | Miscellaneous Steel - Lintels, Equipment Supports & RTU Frames (Division 05) |  | 10d | 2026-09-24 | 2026-10-07 | 107, 54 | 50d |  |
| 119 | 1.2.3.11 | Roof Modifications - Curbs, Openings & Patching (Division 07) |  | 5d | 2026-10-01 | 2026-10-07 | 118SS+5d, 79 | 50d | 2d |
| 120 | 1.2.4 | **Interior Framing & MEP Rough-In (Divisions 09, 22, 23, 26, 27, 28)** |  | 32d | 2026-09-24 | 2026-11-06 |  |  |  |
| 121 | 1.2.4.1 | Metal Stud Framing - Interior Partitions & Furr-Outs (Division 09) |  | 15d | 2026-09-24 | 2026-10-14 | 107, 101 |  |  |
| 122 | 1.2.4.2 | Set Hollow Metal Door Frames in Partitions (Division 08) |  | 3d | 2026-10-01 | 2026-10-05 | 121SS+5d, 24 | 19d |  |
| 123 | 1.2.4.3 | HVAC Overhead Ductwork - Mains & Branches (Division 23) |  | 20d | 2026-09-29 | 2026-10-26 | 121SS+3d | 2d |  |
| 124 | 1.2.4.4 | Mechanical Piping - Refrigerant, Condensate & Hydronic (Division 23) |  | 12d | 2026-10-06 | 2026-10-21 | 123SS+5d | 41d |  |
| 125 | 1.2.4.5 | Plumbing Overhead & In-Wall Rough-In (Division 22) |  | 15d | 2026-10-01 | 2026-10-21 | 121SS+5d | 7d |  |
| 126 | 1.2.4.6 | Electrical Conduit & Boxes - Overhead & In-Wall Rough-In (Division 26) |  | 20d | 2026-10-01 | 2026-10-28 | 121SS+5d |  |  |
| 127 | 1.2.4.7 | Communications Pathways - Cable Tray, Conduit & Sleeves (Division 27) |  | 10d | 2026-10-08 | 2026-10-21 | 126SS+5d | 31d | 21d |
| 128 | 1.2.4.8 | Fire Alarm & Security Rough-In (Division 28) |  | 10d | 2026-10-13 | 2026-10-26 | 126SS+8d | 4d |  |
| 129 | 1.2.4.9 | In-Wall Blocking & Backing (Division 06) |  | 5d | 2026-10-06 | 2026-10-12 | 121SS+8d | 14d |  |
| 130 | 1.2.4.10 | Set Electrical Distribution Gear, Panelboards & Transformers (Division 26) |  | 5d | 2026-10-15 | 2026-10-21 | 115, 19, 99 | 24d |  |
| 131 | 1.2.4.11 | Pull Wire & Make Up - Feeders & Branch Circuits (Division 26) |  | 12d | 2026-10-22 | 2026-11-06 | 126SS+8d, 130 | 24d |  |
| 132 | 1.2.4.12 | Set HVAC Equipment - AHUs/RTUs (Crane Day) (Division 23) |  | 3d | 2026-10-12 | 2026-10-14 | 119, 118, 14 | 48d | 24d |
| 133 | 1.2.4.13 | Set VAV / Fan-Powered Boxes & In-Duct Devices (Division 23) |  | 5d | 2026-10-12 | 2026-10-16 | 123SS+8d, 14 | 41d | 17d |
| 134 | 1.2.4.14 | Ductwork & Piping Insulation (Divisions 07/23) |  | 8d | 2026-10-14 | 2026-10-23 | 123SS+10d, 124SS+6d | 41d |  |
| 135 | 1.2.4.15 | Firestopping & Fire/Smoke Sealants at Rated Penetrations (Division 07) |  | 5d | 2026-10-26 | 2026-10-30 | 123FF+2d, 126FF+2d |  |  |
| 136 | 1.2.4.16 | AHJ Rough Inspections - Frame, Mechanical, Electrical & Plumbing (Hold Point) |  | 2d | 2026-11-02 | 2026-11-03 | 121, 122, 123, 125, 126, 129, 128, 135, 117 |  |  |
| 137 | 1.2.4.17 | MEP & Framing Rough-In Complete - Ready for Cover | milestone | 0d | 2026-11-03 | 2026-11-03 | 136 |  |  |

Notes:
- 104: Division 02 carries 20 days in the bid tab - demolition phase (safe-off through verification walk) spans ~20 working days. ASSUMPTION: no asbestos/hazardous materials abatement in contract (none carried in Exhibit C) - any discovered hazmat is Owner-directed work.
- 107: Unforeseen existing conditions exposed by demolition are addressed from the Owner's Allowance/Contingency (10% of direct costs per Exhibit C).
- 109: Division 31 Earthwork carries 5 days but $0 in the bid tab - ASSUMPTION: trenching/backfill inside the building is carried with Division 22 underground plumbing. Confirm no exterior earthwork scope is intended.
- 111: AHJ inspection hold point - no backfill until the underground rough is approved.
- 114: Field sampling and cylinder casting during pours. ASSUMPTION: construction materials testing is an Owner-carried service unless directed otherwise - confirm.
- 116: ~28 calendar days after slab infill placement.
- 119: Roof cuts/curbs for new HVAC equipment and penetrations; patching by a roofer compatible with the existing system to preserve any existing warranty.
- 122: Requires early frame release from the door supplier - flagged on the 08 submittal package.
- 128: Division 21 Fire Suppression carries $0 in the bid tab - ASSUMPTION: existing sprinkler system remains adequate; any AHJ-required sprinkler modifications are excluded and would be a change. Confirm with the Fire Marshal.
- 132: Crane pick coordinated with Owner site access. Equipment delivery per the long-lead Division 23 procurement - near-critical; confirm lead time at award.
- 136: AHJ hold point - no insulation or drywall cover until rough inspections are approved. Inspection set is a standard commercial build-out sequence; verify against the project specifications and AHJ requirements (plans/specs not provided at proposal).

| ID | WBS | Task | Duration | Start | Finish | Predecessors | Total slack |
| --- | --- | --- | --- | --- | --- | --- | --- |
| 138 | 1.2.5 | **Insulation, Drywall & Ceilings (Divisions 07, 09)** | 38d | 2026-11-04 | 2026-12-31 |  |  |
| 139 | 1.2.5.1 | Wall & Sound Batt Insulation (Division 07) | 5d | 2026-11-04 | 2026-11-10 | 137 |  |
| 140 | 1.2.5.2 | Insulation Inspection (AHJ) | 1d | 2026-11-11 | 2026-11-11 | 139 |  |
| 141 | 1.2.5.3 | Hang Gypsum Board (Division 09) | 12d | 2026-11-12 | 2026-12-01 | 140 |  |
| 142 | 1.2.5.4 | Tape, Float & Sand - Level 4 Finish (Division 09) | 10d | 2026-11-18 | 2026-12-03 | 141SS+4d |  |
| 143 | 1.2.5.5 | Prime & First Coat Paint (Division 09) | 4d | 2026-12-04 | 2026-12-09 | 142 |  |
| 144 | 1.2.5.6 | Acoustical Ceiling Grid (Division 09) | 8d | 2026-12-10 | 2026-12-21 | 143 |  |
| 145 | 1.2.5.7 | Install Light Fixtures & Lighting Controls in Grid (Division 26) | 8d | 2026-12-14 | 2026-12-23 | 144SS+2d, 29 |  |
| 146 | 1.2.5.8 | Install HVAC Grilles, Registers & Flex Connections (Division 23) | 5d | 2026-12-15 | 2026-12-21 | 144SS+3d | 2d |
| 147 | 1.2.5.9 | Pull & Terminate Structured Cabling (Division 27) | 12d | 2026-11-20 | 2026-12-09 | 127, 141SS+6d, 74 | 10d |
| 148 | 1.2.5.10 | AHJ Above-Ceiling / Close-In Inspection (Hold Point) | 1d | 2026-12-28 | 2026-12-28 | 145, 146, 134, 135, 147 |  |
| 149 | 1.2.5.11 | Drop Acoustical Ceiling Tile (Division 09) | 3d | 2026-12-29 | 2026-12-31 | 148 |  |
| 150 | 1.2.6 | **Interior Finishes (Divisions 06, 08, 09, 10, 11, 12)** | 26d | 2026-12-04 | 2027-01-13 |  |  |
| 151 | 1.2.6.1 | Ceramic Tile - Restroom Floors & Walls (Division 09) | 8d | 2026-12-08 | 2026-12-17 | 142FS+2d, 64 | 8d |
| 152 | 1.2.6.2 | Aluminum Storefront & Interior Glazing (Division 08) | 8d | 2026-12-04 | 2026-12-15 | 142, 34 | 18d |
| 153 | 1.2.6.3 | Install Millwork, Casework & Wall Paneling (Division 06) | 8d | 2026-12-10 | 2026-12-21 | 143, 39 | 11d |
| 154 | 1.2.6.4 | Solid Surface Countertops - Field Measure & Install (Division 06) | 3d | 2026-12-22 | 2026-12-28 | 153 | 11d |
| 155 | 1.2.6.5 | Finish Paint & Final Coats (Division 09) | 8d | 2026-12-22 | 2027-01-05 | 144 |  |
| 156 | 1.2.6.6 | Flooring - LVT, Carpet Tile & Resilient Base (Division 09) | 10d | 2026-12-30 | 2027-01-13 | 155SS+4d, 64 |  |
| 157 | 1.2.6.7 | Joint Sealants & Final Caulking (Division 07) | 3d | 2026-12-30 | 2027-01-04 | 155SS+4d | 7d |
| 158 | 1.2.6.8 | Hang Doors, Install Hardware & Keying (Division 08) | 8d | 2026-12-30 | 2027-01-11 | 155SS+4d, 24, 122 | 2d |
| 159 | 1.2.6.9 | Toilet Partitions, Accessories & Specialties (Division 10) | 4d | 2027-01-04 | 2027-01-07 | 151, 155SS+6d, 69 | 4d |
| 160 | 1.2.6.10 | Interior Signage & Wayfinding (Division 10) | 2d | 2027-01-06 | 2027-01-07 | 155, 69 | 4d |
| 161 | 1.2.6.11 | Fire Extinguishers & Cabinets (Division 10) | 1d | 2027-01-06 | 2027-01-06 | 155 | 5d |
| 162 | 1.2.6.12 | Install Equipment (Division 11) | 2d | 2027-01-12 | 2027-01-13 | 156FF |  |
| 163 | 1.2.6.13 | Window Treatments & Furnishings (Division 12) | 3d | 2027-01-11 | 2027-01-13 | 156SS+7d, 69 |  |
| 164 | 1.2.6.14 | Exterior Improvements - Site Repairs at Entries (Division 32) | 5d | 2026-12-30 | 2027-01-06 | 156SS | 5d |

Notes:
- 148: AHJ hold point - ceiling tile does not drop until the above-ceiling inspection is approved.
- 158: Keying meeting with Owner prior to final keying/cores.
- 162: Division 11 carries $700 / 3 days - minor equipment scope. ASSUMPTION: balance of equipment is Owner-furnished; coordination only.
- 164: Division 32 carries $3,500 / 10 days - minor exterior repair scope concurrent with interior finishes. Confirm extent with the Scope of Services.

| ID | WBS | Task | Type | Duration | Start | Finish | Predecessors | Total slack | Free slack |
| --- | --- | --- | --- | --- | --- | --- | --- | --- | --- |
| 165 | 1.2.7 | **MEP Trim & Low-Voltage Systems (Divisions 22, 26, 27, 28)** |  | 20d | 2026-12-10 | 2027-01-11 |  | 11d |  |
| 166 | 1.2.7.1 | Plumbing Fixtures, Trim & Water Heaters (Division 22) |  | 8d | 2026-12-18 | 2026-12-31 | 151, 59 | 8d |  |
| 167 | 1.2.7.2 | Electrical Devices, Cover Plates & Panel Terminations (Division 26) |  | 8d | 2026-12-28 | 2027-01-07 | 155SS+2d, 131 | 4d |  |
| 168 | 1.2.7.3 | Test, Certify & Label Structured Cabling (Division 27) |  | 3d | 2026-12-10 | 2026-12-14 | 147 | 28d |  |
| 169 | 1.2.7.4 | Install Security Devices, Access Control & Cameras (Division 28) |  | 10d | 2026-12-28 | 2027-01-11 | 128, 155SS+2d, 49 | 9d | 6d |
| 170 | 1.2.7.5 | Fire Alarm Devices & Notification Appliances (Division 28) |  | 6d | 2026-12-29 | 2027-01-06 | 128, 149SS, 49 | 3d |  |
| 171 | 1.2.8 | **Startup, Testing & Commissioning** |  | 46d | 2026-11-09 | 2027-01-18 |  | 4d |  |
| 172 | 1.2.8.1 | Permanent Power Energization & Switchover |  | 2d | 2026-11-09 | 2026-11-10 | 130, 131 | 24d |  |
| 173 | 1.2.8.2 | BAS Controls - Point-to-Point & Programming (Divisions 23/25) |  | 10d | 2026-11-11 | 2026-11-24 | 44, 133, 172 | 24d |  |
| 174 | 1.2.8.3 | HVAC Equipment Startup & Refrigerant Charge |  | 4d | 2026-11-18 | 2026-11-23 | 172, 132, 133, 124, 173SS+5d | 24d |  |
| 175 | 1.2.8.4 | Test, Adjust & Balance (TAB) w/ Report |  | 8d | 2027-01-04 | 2027-01-13 | 174, 146, 149 |  |  |
| 176 | 1.2.8.5 | Fire Alarm Pre-Test & AHJ Acceptance Test (Hold Point) |  | 2d | 2027-01-07 | 2027-01-08 | 170, 173 | 3d |  |
| 177 | 1.2.8.6 | Life Safety Demonstration - Egress, Emergency Lighting & Signage |  | 1d | 2027-01-11 | 2027-01-11 | 176, 145 | 5d |  |
| 178 | 1.2.8.7 | Functional Performance Testing / Commissioning |  | 5d | 2027-01-08 | 2027-01-14 | 175SS+4d, 173 | 6d | 3d |
| 179 | 1.2.8.8 | AHJ Final Inspections - Building, Mechanical, Electrical & Plumbing |  | 3d | 2027-01-14 | 2027-01-18 | 176, 175, 158, 166, 167, 159, 161, 160 |  |  |
| 180 | 1.2.8.9 | Certificate of Occupancy Issued | milestone | 0d | 2027-01-18 | 2027-01-18 | 179, 177 |  |  |
| 181 | 1.2.9 | Field Supervision & General Conditions - Division 01 (Level of Effort) |  | 105d | 2026-08-26 | 2027-01-27 | 98SS | 1d |  |
| 182 | 1.3 | **Closeout** |  | 11d | 2027-01-14 | 2027-01-28 |  |  |  |
| 183 | 1.3.1 | Final Cleaning |  | 3d | 2027-01-14 | 2027-01-18 | 156, 158, 159, 163, 157, 152, 154, 164, 162 |  |  |
| 184 | 1.3.2 | Punch Walk - Owner / A/E / Triun |  | 1d | 2027-01-19 | 2027-01-19 | 183, 180, 196, 200, 204 |  |  |
| 185 | 1.3.3 | Punch List Completion |  | 5d | 2027-01-20 | 2027-01-26 | 184 |  |  |
| 186 | 1.3.4 | As-Built Drawings & Record Documents |  | 5d | 2027-01-19 | 2027-01-25 | 184SS | 1d |  |
| 187 | 1.3.5 | O&M Manuals, Warranties & Attic Stock |  | 5d | 2027-01-19 | 2027-01-25 | 184SS | 1d |  |
| 188 | 1.3.6 | Owner Training - HVAC, Controls, Fire Alarm & Security |  | 2d | 2027-01-20 | 2027-01-21 | 178, 184, 169 | 3d |  |
| 189 | 1.3.7 | Substantial Completion |  | 1d | 2027-01-26 | 2027-01-26 | 185FF, 180 |  |  |
| 190 | 1.3.8 | Final Inspection & Final Payment Application |  | 2d | 2027-01-27 | 2027-01-28 | 189, 186, 187, 188, 116, 168, 114 |  |  |
| 191 | 1.3.9 | Final Completion | milestone | 0d | 2027-01-28 | 2027-01-28 | 190 |  |  |

Notes:
- 168: Includes MDF/IDF rack dress-out and certification reports to the Owner.
- 169: Access control and camera head-end commissioning feeds Owner training.
- 172: Coordinate utility/Owner shutdown windows for the switchover.
- 175: Certified TAB agency; report submitted with closeout documents.
- 176: AHJ acceptance test required before Certificate of Occupancy.
- 179: Fire extinguishers and ADA/egress signage in place ahead of final inspections and Certificate of Occupancy.
- 180: AHJ Certificate of Occupancy / approval to occupy - precedes Substantial Completion.
- 181: Division 01 General Requirements carries 105 days in the bid tab ($226,396.03) - basis of the ~105-working-day onsite duration. Level-of-effort bar spans onsite construction; adjust duration to actual conditions.
- 184: Punch walk covers base bid and any awarded alternates (alternate completion milestones are linked as predecessors).
- 189: Substantial Completion at punch list completion with the Certificate of Occupancy in hand.

| ID | WBS | Task | Type | Duration | Start | Finish | Predecessors | Total slack | Free slack |
| --- | --- | --- | --- | --- | --- | --- | --- | --- | --- |
| 192 | 1.4 | **Alternates Breakout (Exhibit C - If Awarded)** |  | 88d | 2026-08-07 | 2026-12-11 |  | 23d |  |
| 193 | 1.4.1 | **Alternate No. 1 (Exhibit C)** |  | 80d | 2026-08-07 | 2026-12-01 |  | 31d |  |
| 194 | 1.4.1.1 | Alternate No. 1 - Submittals & Procurement |  | 15d | 2026-08-07 | 2026-08-27 | 4FS+2d | 84d | 53d |
| 195 | 1.4.1.2 | Alternate No. 1 - Construction Work |  | 12d | 2026-11-12 | 2026-12-01 | 194, 141SS | 31d |  |
| 196 | 1.4.1.3 | Alternate No. 1 Complete | milestone | 0d | 2026-12-01 | 2026-12-01 | 195 | 31d |  |
| 197 | 1.4.2 | **Alternate No. 2 (Exhibit C)** |  | 83d | 2026-08-07 | 2026-12-04 |  | 28d |  |
| 198 | 1.4.2.1 | Alternate No. 2 - Submittals & Procurement |  | 15d | 2026-08-07 | 2026-08-27 | 4FS+2d | 86d | 58d |
| 199 | 1.4.2.2 | Alternate No. 2 - Construction Work |  | 10d | 2026-11-19 | 2026-12-04 | 198, 141SS+5d | 28d |  |
| 200 | 1.4.2.3 | Alternate No. 2 Complete | milestone | 0d | 2026-12-04 | 2026-12-04 | 199 | 28d |  |
| 201 | 1.4.3 | **Alternate No. 3 (Exhibit C)** |  | 88d | 2026-08-07 | 2026-12-11 |  | 23d |  |
| 202 | 1.4.3.1 | Alternate No. 3 - Submittals & Procurement |  | 20d | 2026-08-07 | 2026-09-03 | 4FS+2d | 71d | 48d |
| 203 | 1.4.3.2 | Alternate No. 3 - Construction Work |  | 20d | 2026-11-12 | 2026-12-11 | 202, 141SS | 23d |  |
| 204 | 1.4.3.3 | Alternate No. 3 Complete | milestone | 0d | 2026-12-11 | 2026-12-11 | 203 | 23d |  |

Notes:
- 194: Add alternate per Exhibit C - Section 00003A ($99,000.00: material + labor). Scope description pending - durations are placeholders; provide the alternate scope to detail tasks. Scheduled concurrent with the base bid; does not extend base Substantial Completion.
- 195: Runs concurrent with base-bid interior finishes; resequence once the alternate scope is confirmed.
- 198: Add alternate per Exhibit C - Section 00003A ($79,008.53: material + labor). Scope description pending - durations are placeholders; provide the alternate scope to detail tasks. Scheduled concurrent with the base bid; does not extend base Substantial Completion.
- 199: Runs concurrent with base-bid interior finishes; resequence once the alternate scope is confirmed.
- 202: Add alternate per Exhibit C - Section 00003A ($285,781.66: material + labor). Scope description pending - durations are placeholders; provide the alternate scope to detail tasks. Scheduled concurrent with the base bid; does not extend base Substantial Completion.
- 203: Runs concurrent with base-bid interior finishes; resequence once the alternate scope is confirmed.
